# ПЗ1_Вариант1_Стандарт

How a schedule from MS Project changed from version to version. A marks actual dates.

## Version 1 (saved 2026-10-11)

| ID | WBS | Task | Duration | Start | Finish | Predecessors | Total float | Constraint |
| --- | --- | --- | --- | --- | --- | --- | --- | --- |
| 1 |  | Начало проекта | 0d | 2026-10-02 | 2026-10-02 |  | 0d |  |
| 2 | 2 | **Утверждение проектов** | 101d | 2026-10-02 | 2027-02-24 |  | 0d |  |
| 3 |  | Начало утверждения проектов | 1d | 2026-10-02 | 2026-10-02 | 1 | 0d |  |
| 4 |  | Утверждение проекта на строительство | 90d | 2026-10-05 | 2027-02-10 | 3 | 10d |  |
| 5 |  | Утверждение проекта на газ | 100d | 2026-10-05 | 2027-02-24 | 3 | 0d |  |
| 6 |  | Утверждение проекта на водопровод и канализацию | 60d | 2026-10-05 | 2026-12-28 | 3 | 40d |  |
| 7 |  | Утверждение проета на отопление | 90d | 2026-10-05 | 2027-02-10 | 3 | 10d |  |
| 8 |  | Проекты утверждены | 0d | 2027-02-24 | 2027-02-24 | 4, 5, 6, 7 | 0d |  |
| 9 | 3 | **Строительство фундамента** | 47d | 2027-02-25 | 2027-05-05 |  | 0d |  |
| 10 |  | Начало закладки фундамента | 2d | 2027-02-25 | 2027-02-26 | 8 | 0d |  |
| 11 |  | Рытье траншей | 10d | 2027-03-01 | 2027-03-15 | 10 | 0d |  |
| 12 |  | Заливка фундамента | 5d | 2027-03-16 | 2027-03-22 | 11 | 0d |  |
| 13 |  | Фундамент завершен | 0d | 2027-05-05 | 2027-05-05 | 12FS+30d | 0d |  |
| 14 | 4 | **Каркас и крыша** | 111d | 2027-05-06 | 2027-10-07 |  | 0d |  |
| 15 |  | Начало каркаса | 1d | 2027-05-06 | 2027-05-06 | 13 | 0d |  |
| 16 |  | Кладка стен | 60d | 2027-05-07 | 2027-07-29 | 15 | 0d |  |
| 17 |  | Перекрытие стен | 15d | 2027-07-30 | 2027-08-19 | 16 | 0d |  |
| 18 |  | Установка крыши | 30d | 2027-08-20 | 2027-09-30 | 17 | 5d |  |
| 19 |  | Установка наружных дверей и окон | 7d | 2027-08-20 | 2027-08-30 | 17 | 28d |  |
| 20 |  | Установка полов | 5d | 2027-10-01 | 2027-10-07 | 17 | 0d |  |
| 21 |  | Каркас готов | 0d | 2027-10-07 | 2027-10-07 | 18, 19, 20 | 0d |  |
| 22 | 5 | **Коммуникации** | 11d | 2027-10-08 | 2027-10-22 |  | 0d |  |
| 23 |  | Начало установки коммуникаций | 1d | 2027-10-08 | 2027-10-08 | 21 | 0d |  |
| 24 |  | Проведение и подключение водопровода и канализации | 10d | 2027-10-11 | 2027-10-22 | 23 | 0d |  |
| 25 |  | Установка и подключение электропроводки | 5d | 2027-10-11 | 2027-10-15 | 23 | 5d |  |
| 26 |  | Установка и подключение газовых коммуникаций | 5d | 2027-10-11 | 2027-10-15 | 23 | 5d |  |
| 27 |  | Коммуникации готовы | 0d | 2027-10-22 | 2027-10-22 | 24, 25, 26 | 0d |  |
| 28 | 6 | **Внутренняя отделка** | 40d | 2027-10-22 | 2027-12-17 |  | 0d |  |
| 29 |  | Начало отделки | 0d | 2027-10-22 | 2027-10-22 | 27 | 0d |  |
| 30 |  | Внутренние двери | 10d | 2027-10-25 | 2027-11-05 | 29 | 0d |  |
| 31 |  | Навесные потолки | 5d | 2027-11-08 | 2027-11-12 | 30 | 5d |  |
| 32 |  | Отделка стен | 3d | 2027-11-24 | 2027-11-26 | 30 | 0d | as late as possible |
| 33 |  | Монтаж отопления | 10d | 2027-11-08 | 2027-11-19 | 30 | 0d |  |
| 34 |  | Установка оборудования, приборов, сантехники | 5d | 2027-11-22 | 2027-11-26 | 31, 33 | 0d |  |
| 35 |  | Настил полов | 15d | 2027-11-29 | 2027-12-17 | 32, 34 | 0d |  |
| 36 |  | Конец отделки | 0d | 2027-12-17 | 2027-12-17 | 35 | 0d |  |
| 37 |  | Конец проекта | 0d | 2027-12-17 | 2027-12-17 | 36 | 0d |  |

## Version 2 (saved 2026-10-12)

Last finish 2027-12-17 → 2027-12-10 (-7d).

Changed:

| ID | Task | Start | Finish | Duration | Total float |
| --- | --- | --- | --- | --- | --- |
| 14 | **Каркас и крыша** |  | 2027-10-07 → 2027-09-30 (-7d) | 111d → 106d |  |
| 20 | Установка полов | 2027-10-01 → 2027-08-20 (-42d) | 2027-10-07 → 2027-08-26 (-42d) |  | 0d → 25d |
| 21 | Каркас готов | 2027-10-07 → 2027-09-30 (-7d) | 2027-10-07 → 2027-09-30 (-7d) |  |  |
| 22 | **Коммуникации** | 2027-10-08 → 2027-10-01 (-7d) | 2027-10-22 → 2027-10-15 (-7d) |  |  |
| 23 | Начало установки коммуникаций | 2027-10-08 → 2027-10-01 (-7d) | 2027-10-08 → 2027-10-01 (-7d) |  |  |
| 24 | Проведение и подключение водопровода и канализации | 2027-10-11 → 2027-10-04 (-7d) | 2027-10-22 → 2027-10-15 (-7d) |  |  |
| 25 | Установка и подключение электропроводки | 2027-10-11 → 2027-10-04 (-7d) | 2027-10-15 → 2027-10-08 (-7d) |  |  |
| 26 | Установка и подключение газовых коммуникаций | 2027-10-11 → 2027-10-04 (-7d) | 2027-10-15 → 2027-10-08 (-7d) |  |  |
| 27 | Коммуникации готовы | 2027-10-22 → 2027-10-15 (-7d) | 2027-10-22 → 2027-10-15 (-7d) |  |  |
| 28 | **Внутренняя отделка** | 2027-10-22 → 2027-10-15 (-7d) | 2027-12-17 → 2027-12-10 (-7d) |  |  |
| 29 | Начало отделки | 2027-10-22 → 2027-10-15 (-7d) | 2027-10-22 → 2027-10-15 (-7d) |  |  |
| 30 | Внутренние двери | 2027-10-25 → 2027-10-18 (-7d) | 2027-11-05 → 2027-10-29 (-7d) |  |  |
| 31 | Навесные потолки | 2027-11-08 → 2027-11-01 (-7d) | 2027-11-12 → 2027-11-05 (-7d) |  |  |
| 32 | Отделка стен | 2027-11-24 → 2027-11-17 (-7d) | 2027-11-26 → 2027-11-19 (-7d) |  |  |
| 33 | Монтаж отопления | 2027-11-08 → 2027-11-01 (-7d) | 2027-11-19 → 2027-11-12 (-7d) |  |  |
| 34 | Установка оборудования, приборов, сантехники | 2027-11-22 → 2027-11-15 (-7d) | 2027-11-26 → 2027-11-19 (-7d) |  |  |
| 35 | Настил полов | 2027-11-29 → 2027-11-22 (-7d) | 2027-12-17 → 2027-12-10 (-7d) |  |  |
| 36 | Конец отделки | 2027-12-17 → 2027-12-10 (-7d) | 2027-12-17 → 2027-12-10 (-7d) |  |  |
| 37 | Конец проекта | 2027-12-17 → 2027-12-10 (-7d) | 2027-12-17 → 2027-12-10 (-7d) |  |  |
