# ПЗ1_Вариант1_Стандарт

How a schedule from MS Project changed from version to version. A marks actual dates.

## Version 1 (saved 2026-11-08, file Процент.mpp)

| ID | WBS | Task | Duration | Start | Finish | Predecessors | Complete | Total float | Constraint |
| --- | --- | --- | --- | --- | --- | --- | --- | --- | --- |
| 1 |  | Начало проекта | 0d | 2026-10-02 | 2026-10-02 |  |  | 305d |  |
| 2 | 2 | **Утверждение проектов** | 101d | 2026-10-02 A | 2027-02-24 |  | 27% | 0d |  |
| 3 |  | Начало утверждения проектов | 1d | 2026-10-02 A | 2026-10-02 A | 1 | 100% |  |  |
| 4 |  | Утверждение проекта на строительство | 90d | 2026-10-05 A | 2027-02-10 | 3 | 25% | 10d |  |
| 5 |  | Утверждение проекта на газ | 100d | 2026-10-05 A | 2027-02-24 | 3 | 23% | 0d |  |
| 6 |  | Утверждение проекта на водопровод и канализацию | 60d | 2026-10-05 A | 2026-12-28 | 3 | 38% | 40d |  |
| 7 |  | Утверждение проета на отопление | 90d | 2026-10-05 A | 2027-02-10 | 3 | 25% | 10d |  |
| 8 |  | Проекты утверждены | 0d | 2027-02-24 | 2027-02-24 | 4, 5, 6, 7 |  | 0d |  |
| 9 | 3 | **Строительство фундамента** | 47d | 2027-02-25 | 2027-05-05 |  |  | 0d |  |
| 10 |  | Начало закладки фундамента | 2d | 2027-02-25 | 2027-02-26 | 8 |  | 0d |  |
| 11 |  | Рытье траншей | 10d | 2027-03-01 | 2027-03-15 | 10 |  | 0d |  |
| 12 |  | Заливка фундамента | 5d | 2027-03-16 | 2027-03-22 | 11 |  | 0d |  |
| 13 |  | Фундамент завершен | 0d | 2027-05-05 | 2027-05-05 | 12FS+30d |  | 0d |  |
| 14 | 4 | **Каркас и крыша** | 106d | 2027-05-06 | 2027-09-30 |  |  | 0d |  |
| 15 |  | Начало каркаса | 1d | 2027-05-06 | 2027-05-06 | 13 |  | 0d |  |
| 16 |  | Кладка стен | 60d | 2027-05-07 | 2027-07-29 | 15 |  | 0d |  |
| 17 |  | Перекрытие стен | 15d | 2027-07-30 | 2027-08-19 | 16 |  | 0d |  |
| 18 |  | Установка крыши | 30d | 2027-08-20 | 2027-09-30 | 17 |  | 0d |  |
| 19 |  | Установка наружных дверей и окон | 7d | 2027-08-20 | 2027-08-30 | 17 |  | 23d |  |
| 20 |  | Установка полов | 5d | 2027-08-20 | 2027-08-26 | 17 |  | 25d |  |
| 21 |  | Каркас готов | 0d | 2027-09-30 | 2027-09-30 | 18, 19, 20 |  | 0d |  |
| 22 | 5 | **Коммуникации** | 11d | 2027-10-01 | 2027-10-15 |  |  | 0d |  |
| 23 |  | Начало установки коммуникаций | 1d | 2027-10-01 | 2027-10-01 | 21 |  | 0d |  |
| 24 |  | Проведение и подключение водопровода и канализации | 10d | 2027-10-04 | 2027-10-15 | 23 |  | 0d |  |
| 25 |  | Установка и подключение электропроводки | 5d | 2027-10-04 | 2027-10-08 | 23 |  | 5d |  |
| 26 |  | Установка и подключение газовых коммуникаций | 5d | 2027-10-04 | 2027-10-08 | 23 |  | 5d |  |
| 27 |  | Коммуникации готовы | 0d | 2027-10-15 | 2027-10-15 | 24, 25, 26 |  | 0d |  |
| 28 | 6 | **Внутренняя отделка** | 40d | 2027-10-15 | 2027-12-10 |  |  | 0d |  |
| 29 |  | Начало отделки | 0d | 2027-10-15 | 2027-10-15 | 27 |  | 0d |  |
| 30 |  | Внутренние двери | 10d | 2027-10-18 | 2027-10-29 | 29 |  | 0d |  |
| 31 |  | Навесные потолки | 5d | 2027-11-01 | 2027-11-05 | 30 |  | 5d |  |
| 32 |  | Отделка стен | 3d | 2027-11-17 | 2027-11-19 | 30 |  | 0d | as late as possible |
| 33 |  | Монтаж отопления | 10d | 2027-11-01 | 2027-11-12 | 30 |  | 0d |  |
| 34 |  | Установка оборудования, приборов, сантехники | 5d | 2027-11-15 | 2027-11-19 | 31, 33 |  | 0d |  |
| 35 |  | Настил полов | 15d | 2027-11-22 | 2027-12-10 | 32, 34 |  | 0d |  |
| 36 |  | Конец отделки | 0d | 2027-12-10 | 2027-12-10 | 35 |  | 0d |  |
| 37 |  | Конец проекта | 0d | 2027-12-10 | 2027-12-10 | 36 |  | 0d |  |

## Version 2 (saved 2026-11-08, file Факт.mpp)

Last finish stays 2027-12-10.

Changed:

| ID | Task | Start | Finish | Complete | Total float |
| --- | --- | --- | --- | --- | --- |
| 2 | **Утверждение проектов** | 2026-10-02 A → 2026-10-02 |  | 27% → 0% | 0d → 202d |
| 3 | Начало утверждения проектов | 2026-10-02 A → 2026-10-02 | 2026-10-02 A → 2026-10-02 | 100% → 0% | none → 202d |
| 4 | Утверждение проекта на строительство | 2026-10-05 A → 2026-10-05 |  | 25% → 0% | 10d → 212d |
| 5 | Утверждение проекта на газ | 2026-10-05 A → 2026-10-05 |  | 23% → 0% | 0d → 202d |
| 6 | Утверждение проекта на водопровод и канализацию | 2026-10-05 A → 2026-10-05 |  | 38% → 0% | 40d → 242d |
| 7 | Утверждение проета на отопление | 2026-10-05 A → 2026-10-05 |  | 25% → 0% | 10d → 212d |
| 9 | **Строительство фундамента** | 2027-02-25 A |  | 0% → 59% | 0d → 157d |
| 11 | Рытье траншей | 2027-03-01 A | 2027-03-15 A | 0% → 100% | 0d → none |

## Version 3 (saved 2026-11-08, file Задачи.mpp)

Last finish 2027-12-10 → 2027-12-13 (+3d). Complete tasks 1 → 0.

Changed:

| ID | Task | Start | Finish | Duration | Complete | Total float |
| --- | --- | --- | --- | --- | --- | --- |
| 9 | **Строительство фундамента** | 2027-02-25 A → 2027-02-25 |  |  | 59% → 0% | 157d → 2.8d |
| 11 | Рытье траншей | 2027-03-01 A → 2027-03-01 | 2027-03-15 A → 2027-03-15 |  | 100% → 0% | none → 2.8d |
| 14 | **Каркас и крыша** | 2027-05-06 A | 2027-09-30 → 2027-10-01 (+1d) | 106d → 106.8d | 0% → 3% |  |
| 16 | Кладка стен | 2027-05-07 A | 2027-07-29 → 2027-07-30 (+1d) | 60d → 60.8d | 0% → 5% |  |
| 17 | Перекрытие стен |  | 2027-08-19 → 2027-08-20 (+1d) |  |  |  |
| 18 | Установка крыши |  | 2027-09-30 → 2027-10-01 (+1d) |  |  |  |
| 19 | Установка наружных дверей и окон |  | 2027-08-30 → 2027-08-31 (+1d) |  |  |  |
| 20 | Установка полов |  | 2027-08-26 → 2027-08-27 (+1d) |  |  |  |
| 21 | Каркас готов | 2027-09-30 → 2027-10-01 (+1d) | 2027-09-30 → 2027-10-01 (+1d) |  |  |  |
| 22 | **Коммуникации** |  | 2027-10-15 → 2027-10-18 (+3d) |  |  |  |
| 23 | Начало установки коммуникаций |  | 2027-10-01 → 2027-10-04 (+3d) |  |  |  |
| 24 | Проведение и подключение водопровода и канализации |  | 2027-10-15 → 2027-10-18 (+3d) |  |  |  |
| 25 | Установка и подключение электропроводки |  | 2027-10-08 → 2027-10-11 (+3d) |  |  |  |
| 26 | Установка и подключение газовых коммуникаций |  | 2027-10-08 → 2027-10-11 (+3d) |  |  |  |
| 27 | Коммуникации готовы | 2027-10-15 → 2027-10-18 (+3d) | 2027-10-15 → 2027-10-18 (+3d) |  |  |  |
| 28 | **Внутренняя отделка** | 2027-10-15 → 2027-10-18 (+3d) | 2027-12-10 → 2027-12-13 (+3d) |  |  |  |
| 29 | Начало отделки | 2027-10-15 → 2027-10-18 (+3d) | 2027-10-15 → 2027-10-18 (+3d) |  |  |  |
| 30 | Внутренние двери |  | 2027-10-29 → 2027-11-01 (+3d) |  |  |  |
| 31 | Навесные потолки |  | 2027-11-05 → 2027-11-08 (+3d) |  |  |  |
| 32 | Отделка стен |  | 2027-11-19 → 2027-11-22 (+3d) |  |  |  |
| 33 | Монтаж отопления |  | 2027-11-12 → 2027-11-15 (+3d) |  |  |  |
| 34 | Установка оборудования, приборов, сантехники |  | 2027-11-19 → 2027-11-22 (+3d) |  |  |  |
| 35 | Настил полов |  | 2027-12-10 → 2027-12-13 (+3d) |  |  |  |
| 36 | Конец отделки | 2027-12-10 → 2027-12-13 (+3d) | 2027-12-10 → 2027-12-13 (+3d) |  |  |  |
| 37 | Конец проекта | 2027-12-10 → 2027-12-13 (+3d) | 2027-12-10 → 2027-12-13 (+3d) |  |  |  |

## Version 4 (saved 2026-11-08, file Ресурсы.mpp)

Last finish 2027-12-13 → 2027-12-10 (-3d).

Changed:

| ID | Task | Start | Finish | Duration | Complete | Total float |
| --- | --- | --- | --- | --- | --- | --- |
| 14 | **Каркас и крыша** | 2027-05-06 A → 2027-05-06 | 2027-10-01 → 2027-09-30 (-1d) | 106.8d → 106d | 3% → 0% | 0d → 1d |
| 16 | Кладка стен | 2027-05-07 A → 2027-05-07 | 2027-07-30 → 2027-07-29 (-1d) | 60.8d → 60d | 5% → 0% | 0d → 1d |
| 17 | Перекрытие стен |  | 2027-08-20 → 2027-08-19 (-1d) |  |  | 0d → 1d |
| 18 | Установка крыши |  | 2027-10-01 → 2027-09-30 (-1d) |  |  | 0d → 1d |
| 19 | Установка наружных дверей и окон |  | 2027-08-31 → 2027-08-30 (-1d) |  |  | 23d → 24d |
| 20 | Установка полов |  | 2027-08-27 → 2027-08-26 (-1d) |  |  | 25d → 26d |
| 21 | Каркас готов | 2027-10-01 → 2027-09-30 (-1d) | 2027-10-01 → 2027-09-30 (-1d) |  |  | 0d → 1d |
| 22 | **Коммуникации** | 2027-10-01 A | 2027-10-18 → 2027-10-15 (-3d) |  | 0% → 14% |  |
| 23 | Начало установки коммуникаций |  | 2027-10-04 → 2027-10-01 (-3d) |  |  | 0d → 1d |
| 24 | Проведение и подключение водопровода и канализации | 2027-10-04 A | 2027-10-18 → 2027-10-15 (-3d) |  | 0% → 10% |  |
| 25 | Установка и подключение электропроводки | 2027-10-04 A | 2027-10-11 → 2027-10-08 (-3d) |  | 0% → 40% |  |
| 26 | Установка и подключение газовых коммуникаций |  | 2027-10-11 → 2027-10-08 (-3d) |  |  |  |
| 27 | Коммуникации готовы | 2027-10-18 → 2027-10-15 (-3d) | 2027-10-18 → 2027-10-15 (-3d) |  |  |  |
| 28 | **Внутренняя отделка** | 2027-10-18 → 2027-10-15 (-3d) | 2027-12-13 → 2027-12-10 (-3d) |  |  |  |
| 29 | Начало отделки | 2027-10-18 → 2027-10-15 (-3d) | 2027-10-18 → 2027-10-15 (-3d) |  |  |  |
| 30 | Внутренние двери |  | 2027-11-01 → 2027-10-29 (-3d) |  |  |  |
| 31 | Навесные потолки |  | 2027-11-08 → 2027-11-05 (-3d) |  |  |  |
| 32 | Отделка стен |  | 2027-11-22 → 2027-11-19 (-3d) |  |  |  |
| 33 | Монтаж отопления |  | 2027-11-15 → 2027-11-12 (-3d) |  |  |  |
| 34 | Установка оборудования, приборов, сантехники |  | 2027-11-22 → 2027-11-19 (-3d) |  |  |  |
| 35 | Настил полов |  | 2027-12-13 → 2027-12-10 (-3d) |  |  |  |
| 36 | Конец отделки | 2027-12-13 → 2027-12-10 (-3d) | 2027-12-13 → 2027-12-10 (-3d) |  |  |  |
| 37 | Конец проекта | 2027-12-13 → 2027-12-10 (-3d) | 2027-12-13 → 2027-12-10 (-3d) |  |  |  |

## Version 5 (saved 2026-11-08, file pz_04.mpp)

Last finish stays 2027-12-10.

Changed:

| ID | Task | Start | Complete |
| --- | --- | --- | --- |
| 22 | **Коммуникации** | 2027-10-01 A → 2027-10-01 | 14% → 0% |
| 24 | Проведение и подключение водопровода и канализации | 2027-10-04 A → 2027-10-04 | 10% → 0% |
| 25 | Установка и подключение электропроводки | 2027-10-04 A → 2027-10-04 | 40% → 0% |
